# FiberTel Network Upgrade

Schedule from MS Project, 2018-03-05 to 2018-05-16, 7 hours a day, costs in $.
Syracuse University

## Calendars

- Standard: Mon-Fri 09:00-12:00, 13:00-17:00; Sat-Sun off.
- Installation shift: Mon-Fri 15:00-19:00, 19:30-23:30; Sat-Sun off.

## Resources

| Resource | Rate |
| --- | --- |
| Romil Godha | 45 |
| Bob T. Adams | 38 |
| Jessica A. Thomas | 35 |
| Mary J. Ryan | 29 |
| PC workstations with monitors and software suite | 1750 |
| VoIP Handsets | 450 |
| Patch Cables(Cost of total quantity) | 240 |
| Cubicle Furniture | 1275 |
| Kyocera Network High-speed Copier/ Printer | 2950 |
| Cisco Wireless Access Points | 160 |
| Cisco ME3400 Switch | 1765 |
| Wall-mount patch panel to be mounted at hub area | 150 |
| Network Wall Jacks total for all outlets needed | 240 |
| Network Cables | 265 |

## Schedule

| ID | WBS | Task | Type | Duration | Start | Finish | Predecessors | Total slack | Free slack | Constraint | Resources | Work | Cost |
| --- | --- | --- | --- | --- | --- | --- | --- | --- | --- | --- | --- | --- | --- |
| 1 | 1 | **Initiate** |  | 5d | 2018-03-05 09:00 | 2018-03-09 17:00 |  | 1d |  |  |  | 16.5h | 709.5 |
| 2 | 1.1 | Sponsor meeting |  | 7h | 2018-03-05 09:00 | 2018-03-05 17:00 |  | 49.07d | 0d |  | Romil Godha [28.6%] | 2h | 90 |
| 3 | 1.2 | Develop Project Charter |  | 8h | 2018-03-06 09:00 | 2018-03-07 10:00 | 2 | 49.07d | 0d |  | Romil Godha [50%] | 4h | 180 |
| 4 | 1.3 | Review and Approval of Project Charter |  | 8h | 2018-03-07 10:00 | 2018-03-08 11:00 | 3 | 49.07d |  |  | Romil Godha [50%] | 4h | 180 |
| 5 | 1.4 | **Kickoff meeting** |  | 2.54d | 2018-03-06 09:00 | 2018-03-08 13:45 |  | 0d |  |  |  | 4h | 147 |
| 6 | 1.4.1 | Sit down meeting | manual | 16.58h | 2018-03-06 09:00 | 2018-03-08 11:35 |  |  |  | start no earlier than 2018-03-06 08:00 | Bob T. Adams [42.9%]; Jessica A. Thomas [42.9%]; Mary J. Ryan [42.9%]; Romil Godha [42.9%] | 2h | 73.5 |
| 7 | 1.4.2 | Site visit | manual | 17.75h | 2018-03-06 09:00 | 2018-03-08 13:45 |  |  |  | start no earlier than 2018-03-06 08:00 | Bob T. Adams [28.6%]; Jessica A. Thomas [28.6%]; Mary J. Ryan [28.6%]; Romil Godha [28.6%] | 2h | 73.5 |
| 8 | 1.5 | Develop a Project Feasibility study | manual | 5h | 2018-03-09 11:00 | 2018-03-09 17:00 |  |  |  | finish no earlier than 2018-03-09 23:30 | Romil Godha [42.9%] | 2.5h | 112.5 |
| 9 | 2 | **Plan Project** |  | 36.62d | 2018-03-05 09:00 | 2018-04-24 14:20 |  | 15.52d |  |  |  | 42.5h | 42,228.65 |
| 10 | 2.1 | **Design** |  | 5.5d | 2018-03-05 09:00 | 2018-03-12 13:30 |  | 15.52d |  |  |  | 12.5h | 489.29 |
| 11 | 2.1.1 | Measure allocated space |  | 3.5h | 2018-03-12 09:00 | 2018-03-12 13:30 |  | 46.86d |  | start no earlier than 2018-03-12 08:00 | Bob T. Adams [14.3%]; Romil Godha [14.3%] | 1h | 41.5 |
| 12 | 2.1.2 | Check connectivity in office |  | 7h | 2018-03-06 09:00 | 2018-03-06 17:00 |  | 50.36d |  | start no earlier than 2018-03-06 08:00 | Bob T. Adams [21.4%] | 1.5h | 57 |
| 13 | 2.1.3 | Design Cable Route |  | 7h | 2018-03-05 09:00 | 2018-03-05 17:00 |  | 51.36d |  | start no earlier than 2018-03-05 08:00 | Bob T. Adams [57.1%] | 4h | 152 |
| 14 | 2.1.4 | Calculate cabling requirements |  | 7h | 2018-03-05 09:00 | 2018-03-05 17:00 |  | 51.36d |  |  | Bob T. Adams [14.3%] | 1h | 38 |
| 15 | 2.1.5 | Obtain clients furniture requirements |  | 7h | 2018-03-08 11:00 | 2018-03-09 11:00 |  | 12.24d | 0d | start no earlier than 2018-03-05 08:00 | Romil Godha [28.6%] | 2h | 90 |
| 16 | 2.1.6 | Design Furniture Layout |  | 2.33h | 2018-03-09 11:00 | 2018-03-09 14:20 | 15 | 12.24d | 0d |  | Jessica A. Thomas [14.3%]; Mary J. Ryan [14.3%]; Romil Godha [14.3%] | 1h | 36.33 |
| 17 | 2.1.7 | Designate space for new equipments |  | 1.08h | 2018-03-05 09:00 | 2018-03-05 10:04 |  | 52.2d |  |  | Jessica A. Thomas [28.6%]; Mary J. Ryan [28.6%]; Romil Godha [28.6%]; Bob T. Adams | 2h | 74.46 |
| 18 | 2.2 | **Procurement** |  | 5.62d | 2018-03-05 09:00 | 2018-03-12 14:20 |  | 16.86d |  |  |  | 15h | 525 |
| 19 | 2.2.1 | Contact Vendors for materials |  | 7h | 2018-03-05 09:00 | 2018-03-05 17:00 |  | 51.36d |  |  | Jessica A. Thomas [28.6%] | 2h | 70 |
| 20 | 2.2.2 | Obtain cost quotation from vendors |  | 8h | 2018-03-07 09:00 | 2018-03-08 10:00 |  | 49.21d |  | start no earlier than 2018-03-07 08:00 | Jessica A. Thomas | 8h | 280 |
| 21 | 2.2.3 | **Procure Equipments** |  | 1d | 2018-03-05 09:00 | 2018-03-05 17:00 |  | 36d |  |  |  | 2.5h | 87.5 |
| 22 | 2.2.3.1 | Procure 10 VoIP handsets |  | 7h | 2018-03-05 09:00 | 2018-03-05 17:00 |  | 36d | 0d |  | Jessica A. Thomas [7.1%] | 0.5h | 17.5 |
| 23 | 2.2.3.2 | Procure Kyocera multi-functional colour network printer-copier |  | 7h | 2018-03-05 09:00 | 2018-03-05 17:00 |  | 36d | 0d |  | Jessica A. Thomas [7.1%] | 0.5h | 17.5 |
| 24 | 2.2.3.3 | Procure Cisco ME3400 aggregation switch |  | 7h | 2018-03-05 09:00 | 2018-03-05 17:00 |  | 36d | 0d |  | Jessica A. Thomas [7.1%] | 0.5h | 17.5 |
| 25 | 2.2.3.4 | Procure 2 Cisco Aironet wireless access points |  | 7h | 2018-03-05 09:00 | 2018-03-05 17:00 |  | 36d | 0d |  | Jessica A. Thomas [7.1%] | 0.5h | 17.5 |
| 26 | 2.2.3.5 | Procure Linux server( MetroTech) |  | 7h | 2018-03-05 09:00 | 2018-03-05 17:00 |  | 36d | 0d |  | Jessica A. Thomas [7.1%] | 0.5h | 17.5 |
| 27 | 2.2.4 | Procure Cabling |  | 8h | 2018-03-05 09:00 | 2018-03-06 10:00 |  | 28.93d | 0d | start no earlier than 2018-03-05 08:00 | Jessica A. Thomas [18.8%] | 1.5h | 52.5 |
| 28 | 2.2.5 | Procure Furniture |  | 7h | 2018-03-09 14:20 | 2018-03-12 14:20 | 16 | 12.24d | 0d |  | Jessica A. Thomas [14.3%] | 1h | 35 |

| ID | WBS | Task | Type | Duration | Start | Finish | Predecessors | Total slack | Free slack | Constraint | Calendar | Resources | Work | Cost |
| --- | --- | --- | --- | --- | --- | --- | --- | --- | --- | --- | --- | --- | --- | --- |
| 29 | 2.3 | **Receive Material** |  | 20.62d | 2018-03-27 09:00 | 2018-04-24 14:20 |  | 15.74d |  |  |  |  | 15h | 41,214.36 |
| 30 | 2.3.1 | Receive Equipment |  | 2.52h | 2018-03-27 09:00 | 2018-03-27 11:31 | 22FS+3w, 23FS+3w, 24FS+3w, 25FS+3w, 26FS+3w | 36d |  |  |  | Romil Godha [19%]; Bob T. Adams; PC workstations with monitors and software suite [1000%]; VoIP Handsets [1000%]; Kyocera Network High-speed Copier/ Printer; Cisco Wireless Access Points [200%]; Cisco ME3400 Switch; Network Wall Jacks total for all outlets needed; Wall-mount patch panel to be mounted at hub area; Patch Cables(Cost of total quantity) | 3h | 27,782.36 |
| 31 | 2.3.2 | Receive Cabling |  | 14h | 2018-03-27 10:00 | 2018-03-29 10:00 | 27FS+3w | 28.93d | 0d |  |  | Bob T. Adams [21.4%]; Network Cables | 3h | 379 |
| 32 | 2.3.3 | Receive Furniture |  | 7h | 2018-04-23 14:20 | 2018-04-24 14:20 | 28FS+6w | 12.24d | 0.1d |  |  | Jessica A. Thomas [28.6%]; Mary J. Ryan [28.6%]; Cubicle Furniture [1000%] | 4h | 12,878 |
| 33 | 2.3.4 | Check quality of received material |  | 17.5h | 2018-03-29 10:00 | 2018-04-09 14:30 | 31 | 24.16d | 0.07d |  |  | Jessica A. Thomas [14.3%] | 2.5h | 87.5 |
| 34 | 2.3.5 | Check quanitity of received material |  | 17.5h | 2018-03-29 10:00 | 2018-04-09 14:30 | 31 | 26.71d |  |  |  | Jessica A. Thomas [14.3%] | 2.5h | 87.5 |
| 35 | 3 | **Execute Project** |  | 33.86d | 2018-03-13 09:00 | 2018-04-27 16:00 |  | 0d |  |  |  |  | 89.5h | 3,121.18 |
| 36 | 3.1 | Clean the work space | manual | 7h | 2018-03-13 09:00 | 2018-03-13 16:00 |  |  |  | start no earlier than 2018-03-13 08:00 | Installation shift | Bob T. Adams [12.2%]; Jessica A. Thomas [12.2%]; Mary J. Ryan [12.2%]; Romil Godha [6.1%] | 3h | 106.71 |
| 37 | 3.2 | Remove unnecessary equipments | manual | 1.75h | 2018-03-13 09:00 | 2018-03-13 10:45 |  |  |  | start no earlier than 2018-03-13 08:00 | Installation shift | Bob T. Adams [28.6%]; Jessica A. Thomas [28.6%]; Mary J. Ryan [28.6%]; Romil Godha [28.6%] | 2h | 73.5 |
| 38 | 3.3 | **Furniture Installation** |  | 3.14d | 2018-04-24 15:00 | 2018-04-27 16:00 |  | 12.14d |  |  |  |  | 16h | 512 |
| 39 | 3.3.1 | Install Cabin |  | 7h | 2018-04-24 15:00 | 2018-04-27 16:00 | 32 | 13.86d |  |  | Installation shift | Jessica A. Thomas [57.1%]; Mary J. Ryan [57.1%] | 8h | 256 |
| 40 | 3.3.2 | Install Furniture |  | 7h | 2018-04-24 15:00 | 2018-04-27 16:00 | 32 | 13.86d |  |  | Installation shift | Jessica A. Thomas [57.1%]; Mary J. Ryan [57.1%] | 8h | 256 |
| 41 | 3.4 | **Equipment Installation** |  | 9.19d | 2018-03-29 15:00 | 2018-04-11 16:21 |  | 24.09d |  |  |  |  | 27.5h | 968.46 |
| 42 | 3.4.1 | Install 10 PC's |  | 2.86h | 2018-04-09 15:00 | 2018-04-10 15:51 | 33 | 27.52d | 0d |  | Installation shift | Bob T. Adams; Jessica A. Thomas; Mary J. Ryan; Romil Godha [50%] | 10h | 355.71 |
| 43 | 3.4.2 | Install required softwares |  | 2.5h | 2018-04-10 15:51 | 2018-04-11 16:21 | 42 | 27.52d |  |  | Installation shift | Bob T. Adams [71.4%]; Jessica A. Thomas [71.4%]; Mary J. Ryan [71.4%]; Romil Godha [50%] | 5h | 183.75 |
| 44 | 3.4.3 | Install 10 VoIP headsets |  | 2.33h | 2018-03-29 15:00 | 2018-03-30 15:20 | 31 | 35.67d | 0d |  | Installation shift | Jessica A. Thomas; Mary J. Ryan; Bob T. Adams | 5h | 174 |
| 45 | 3.4.4 | Install specified printer |  | 3.5h | 2018-03-29 15:00 | 2018-03-30 16:30 | 31 | 33.14d | 0d |  | Installation shift | Bob T. Adams [14.3%]; Jessica A. Thomas [14.3%]; Mary J. Ryan [14.3%] | 1.5h | 51 |
| 46 | 3.4.5 | Install Cisco ME3400 aggregation switch |  | 2.33h | 2018-03-29 15:00 | 2018-03-30 15:20 | 31 | 34.29d | 0d |  | Installation shift | Bob T. Adams [14.3%]; Jessica A. Thomas [14.3%]; Mary J. Ryan [14.3%] | 1h | 34 |
| 47 | 3.4.6 | Install 2 new Cisco Aironet wireless access points |  | 2.33h | 2018-03-29 15:00 | 2018-03-30 15:20 | 31 | 36.81d |  |  | Installation shift | Bob T. Adams [57.1%]; Jessica A. Thomas [57.1%]; Mary J. Ryan [57.1%] | 4h | 136 |
| 48 | 3.4.7 | Install Linux Server |  | 2.33h | 2018-03-29 15:00 | 2018-03-30 15:20 | 31 | 36.81d |  |  | Installation shift | Bob T. Adams [14.3%]; Jessica A. Thomas [14.3%]; Mary J. Ryan [14.3%] | 1h | 34 |
| 49 | 3.5 | **Connect Installations** |  | 7.29d | 2018-03-29 15:00 | 2018-04-09 17:00 |  | 26.36d |  |  |  |  | 12h | 456 |
| 50 | 3.5.1 | Connect PC's to RAID disk storage system |  | 2h | 2018-04-09 15:00 | 2018-04-09 17:00 | 42SS | 26.36d |  |  |  | Bob T. Adams | 2h | 76 |
| 51 | 3.5.2 | Connect VoIP headsets to VoIP box |  | 2h | 2018-03-29 15:00 | 2018-03-29 17:00 | 44SS | 33.36d |  |  |  | Bob T. Adams | 2h | 76 |
| 52 | 3.5.3 | Connect aggregation switch to main router |  | 2h | 2018-04-04 10:00 | 2018-04-04 12:00 | 46SS+24h | 29.93d |  |  |  | Bob T. Adams | 2h | 76 |
| 53 | 3.5.4 | Connect computers to aggregation switch |  | 2h | 2018-04-02 15:00 | 2018-04-02 17:00 | 46SS+2d | 31.36d |  |  |  | Bob T. Adams | 2h | 76 |
| 54 | 3.5.5 | Connect wireless access point to aggregation switch |  | 2h | 2018-04-03 15:00 | 2018-04-03 17:00 | 46SS+3d | 30.36d |  |  |  | Bob T. Adams | 2h | 76 |
| 55 | 3.5.6 | Connect printer to main network |  | 2h | 2018-04-05 15:00 | 2018-04-05 17:00 | 45SS+5d | 28.36d |  |  |  | Bob T. Adams | 2h | 76 |

| ID | WBS | Task | Type | Duration | Start | Finish | Predecessors | Total slack | Free slack | Constraint | Resources | Work | Cost |
| --- | --- | --- | --- | --- | --- | --- | --- | --- | --- | --- | --- | --- | --- |
| 56 | 3.6 | **Configure and Test Installations** |  | 7.79d | 2018-03-30 15:20 | 2018-04-11 13:51 |  | 24.81d |  |  |  | 29h | 1,004.5 |
| 57 | 3.6.1 | Configure and Test each individual PC Workstation |  | 5h | 2018-04-10 15:51 | 2018-04-11 13:51 | 42 | 24.81d |  |  | Bob T. Adams; Jessica A. Thomas; Mary J. Ryan | 15h | 510 |
| 58 | 3.6.2 | Configure and Test each individual VoIP handset |  | 9.53h | 2018-03-30 15:20 | 2018-04-09 13:56 | 44 | 26.8d |  |  | Bob T. Adams [35.7%]; Jessica A. Thomas [35.7%]; Mary J. Ryan [35.7%] | 6h | 204 |
| 59 | 3.6.3 | Configure Wireless Access Points |  | 5.25h | 2018-04-04 10:45 | 2018-04-04 23:30 |  | 29.36d |  | finish no earlier than 2018-04-04 23:30 | Bob T. Adams [28.6%]; Jessica A. Thomas [28.6%]; Mary J. Ryan [28.6%] | 3h | 100.5 |
| 60 | 3.6.4 | Test cabling |  | 17.5h | 2018-04-05 09:00 | 2018-04-09 13:30 |  | 26.86d |  | start no earlier than 2018-04-05 08:00 | Bob T. Adams [28.6%] | 5h | 190 |
| 61 | 4 | **Close Out Project** |  | 14.36d | 2018-04-26 09:00 | 2018-05-16 11:30 |  | 0d |  |  |  | 55h | 2,025.5 |
| 62 | 4.1 | Develop final project documentation |  | 40h | 2018-05-01 09:00 | 2018-05-08 15:00 |  | 4.64d | 0d | start no earlier than 2018-05-01 08:00 | Jessica A. Thomas | 40h | 1,400 |
| 63 | 4.2 | **Gain sponsor acceptance** |  | 9.71d | 2018-04-26 09:00 | 2018-05-09 15:00 |  | 4.64d |  |  |  | 5h | 225 |
| 64 | 4.2.1 | Visit site for review |  | 14h | 2018-04-26 09:00 | 2018-04-27 17:00 |  | 12.36d |  | start no earlier than 2018-04-26 08:00 | Romil Godha [14.3%] | 2h | 90 |
| 65 | 4.2.2 | Review official documentation |  | 7h | 2018-05-08 15:00 | 2018-05-09 15:00 | 62 | 4.64d |  |  | Romil Godha [42.9%] | 3h | 135 |
| 66 | 4.3 | **Analyze project** |  | 1.25d | 2018-05-11 09:00 | 2018-05-14 10:45 |  | 0d |  |  |  | 6h | 220.5 |
| 67 | 4.3.1 | Conduct lessons learned meeting | manual | 1.75h | 2018-05-11 09:00 | 2018-05-11 10:45 |  |  |  | start no earlier than 2018-05-11 08:00 | Bob T. Adams [28.6%]; Jessica A. Thomas [28.6%]; Mary J. Ryan [28.6%]; Romil Godha [28.6%] | 4h | 147 |
| 68 | 4.3.2 | Conduct peer evaluation | manual | 1.75h | 2018-05-14 09:00 | 2018-05-14 10:45 |  |  |  | start no earlier than 2018-05-14 08:00 | Bob T. Adams [14.3%]; Jessica A. Thomas [14.3%]; Mary J. Ryan [14.3%]; Romil Godha [14.3%] | 2h | 73.5 |
| 69 | 4.4 | Reassign resources | manual | 10.5h | 2018-05-15 08:00 | 2018-05-16 11:30 |  |  |  | start no earlier than 2018-05-15 08:00 | Romil Godha [50%] | 4h | 180 |
